# Ly

Schedule from MS Project, 2025-09-15 to 2025-11-18, status date 2025-10-27, costs in ₫, A marks actual dates.

## Calendars

- Standard: Mon-Fri 08:00-12:00, 13:00-17:00; Sat-Sun off.

## Resources

| Resource | Rate |
| --- | --- |
| Bùi Thị Thu Hường (FE1) | 250000 |
| Bùi Lê Thị Trúc Ly (Lead) | 400000 |
| Lê Hữu Lộc (BE1) | 270000 |
| Phạm Anh Quân (BA) | 300000 |
| Nguyễn Tấn Mạnh (Test) | 200000 |
| Hoàng Lê Thanh Hải (BE 2) | 250000 |
| Bùi Tấn Tài (Design) | 220000 |
| Nguyễn Thanh Phú (FE2) | 220000 |

## Schedule

| ID | WBS | Task | Type | Duration | Start | Finish | Predecessors | Complete | Remaining | Baseline start | Baseline finish | Baseline duration | Total slack | Resources | Work | Actual work | Cost | Baseline cost | Actual cost |
| --- | --- | --- | --- | --- | --- | --- | --- | --- | --- | --- | --- | --- | --- | --- | --- | --- | --- | --- | --- |
| 1 | 1 | **QLDA Website Quản lý tiệm bánh** |  | 47d | 2025-09-15 08:00 A | 2025-11-18 17:00 |  | 81% | 8.78d | 2025-09-15 08:00 | 2025-11-18 17:00 | 47d | 0d |  | 728h | 592h | 193,040,000 | 193,040,000 | 155,040,000 |
| 2 | 1.1 | 1.Bắt đầu | milestone | 0d | 2025-09-15 08:00 | 2025-09-15 08:00 |  |  |  | 2025-09-15 08:00 | 2025-09-15 08:00 | 0d | 47d |  |  |  |  |  |  |
| 3 | 1.2 | **2. Khảo sát** |  | 10d | 2025-09-15 08:00 A | 2025-09-26 17:00 A |  | 100% |  | 2025-09-15 08:00 | 2025-09-26 17:00 | 10d |  |  | 80h | 80h | 24,800,000 | 24,800,000 | 24,800,000 |
| 4 | 1.2.1 | 2.1. Khảo sát người dùng |  | 12h | 2025-09-15 08:00 A | 2025-09-16 12:00 A | 2 | 100% |  | 2025-09-15 08:00 | 2025-09-16 12:00 | 12h |  | Phạm Anh Quân (BA) | 12h | 12h | 3,600,000 | 3,600,000 | 3,600,000 |
| 5 | 1.2.2 | 2.2.Viết tài liệu đặc tả chức năng |  | 16h | 2025-09-16 13:00 A | 2025-09-18 12:00 A | 4 | 100% |  | 2025-09-16 13:00 | 2025-09-18 12:00 | 16h |  | Phạm Anh Quân (BA) | 16h | 16h | 4,800,000 | 4,800,000 | 4,800,000 |
| 6 | 1.2.3 | 2.3. Khảo sát quy trình quản lý nhân viên |  | 14h | 2025-09-18 13:00 A | 2025-09-22 10:00 A | 5 | 100% |  | 2025-09-18 13:00 | 2025-09-22 10:00 | 14h |  | Phạm Anh Quân (BA) | 14h | 14h | 4,200,000 | 4,200,000 | 4,200,000 |
| 7 | 1.2.4 | 2.4. Khảo sát các phần mềm quản lý |  | 14h | 2025-09-22 10:00 A | 2025-09-23 17:00 A | 6 | 100% |  | 2025-09-22 10:00 | 2025-09-23 17:00 | 14h |  | Phạm Anh Quân (BA) | 14h | 14h | 4,200,000 | 4,200,000 | 4,200,000 |
| 8 | 1.2.5 | 2.5. Khảo sát quản lý doanh thu |  | 16h | 2025-09-24 08:00 A | 2025-09-25 17:00 A | 7 | 100% |  | 2025-09-24 08:00 | 2025-09-25 17:00 | 16h |  | Phạm Anh Quân (BA) | 16h | 16h | 4,800,000 | 4,800,000 | 4,800,000 |
| 9 | 1.2.6 | Hoàn thành giao đoạn khảo sát |  | 1d | 2025-09-26 08:00 A | 2025-09-26 17:00 A | 8 | 100% |  | 2025-09-26 08:00 | 2025-09-26 17:00 | 1d |  | Bùi Lê Thị Trúc Ly (Lead) | 8h | 8h | 3,200,000 | 3,200,000 | 3,200,000 |
| 10 | 1.3 | **3. Phân tích và thiết kế** |  | 7d | 2025-09-29 08:00 A | 2025-10-07 17:00 A |  | 100% |  | 2025-09-29 08:00 | 2025-10-07 17:00 | 7d |  |  | 80h | 80h | 24,640,000 | 24,640,000 | 24,640,000 |
| 11 | 1.3.1 | 3.1. Vẽ usecase diagram tổng quát |  | 1d | 2025-09-29 08:00 A | 2025-09-29 17:00 A | 9 | 100% |  | 2025-09-29 08:00 | 2025-09-29 17:00 | 1d |  | Bùi Lê Thị Trúc Ly (Lead) | 8h | 8h | 3,200,000 | 3,200,000 | 3,200,000 |
| 12 | 1.3.2 | **3.2. Activity diagram** |  | 2d | 2025-09-29 08:00 A | 2025-09-30 17:00 A |  | 100% |  | 2025-09-29 08:00 | 2025-09-30 17:00 | 2d |  |  | 16h | 16h | 4,800,000 | 4,800,000 | 4,800,000 |
| 13 | 1.3.2.1 | 3.2.1. Quy trình đặt bánh |  | 2h | 2025-09-29 08:00 A | 2025-09-29 10:00 A | 9 | 100% |  | 2025-09-29 08:00 | 2025-09-29 10:00 | 2h |  | Phạm Anh Quân (BA) | 2h | 2h | 600,000 | 600,000 | 600,000 |
| 14 | 1.3.2.2 | 3.2.2. Quy trình quản lý đơn hàng |  | 2h | 2025-09-29 10:00 A | 2025-09-29 12:00 A | 13 | 100% |  | 2025-09-29 10:00 | 2025-09-29 12:00 | 2h |  | Phạm Anh Quân (BA) | 2h | 2h | 600,000 | 600,000 | 600,000 |
| 15 | 1.3.2.3 | 3.2.3. Quy trình quản lý nhân viên |  | 2h | 2025-09-29 13:00 A | 2025-09-29 15:00 A | 14 | 100% |  | 2025-09-29 13:00 | 2025-09-29 15:00 | 2h |  | Phạm Anh Quân (BA) | 2h | 2h | 600,000 | 600,000 | 600,000 |
| 16 | 1.3.2.4 | 3.2.4. Quy trình quản lý sản phẩm |  | 4h | 2025-09-29 15:00 A | 2025-09-30 10:00 A | 15 | 100% |  | 2025-09-29 15:00 | 2025-09-30 10:00 | 4h |  | Phạm Anh Quân (BA) | 4h | 4h | 1,200,000 | 1,200,000 | 1,200,000 |
| 17 | 1.3.2.5 | 3.2.5. Quy trình quản lý khách hàng |  | 4h | 2025-09-30 10:00 A | 2025-09-30 15:00 A | 16 | 100% |  | 2025-09-30 10:00 | 2025-09-30 15:00 | 4h |  | Phạm Anh Quân (BA) | 4h | 4h | 1,200,000 | 1,200,000 | 1,200,000 |
| 18 | 1.3.2.6 | 3.2.6. Quản trị hệ thống |  | 2h | 2025-09-30 15:00 A | 2025-09-30 17:00 A | 17 | 100% |  | 2025-09-30 15:00 | 2025-09-30 17:00 | 2h |  | Phạm Anh Quân (BA) | 2h | 2h | 600,000 | 600,000 | 600,000 |
| 19 | 1.3.3 | 3.3 Thiết kế Database |  | 2d | 2025-09-30 08:00 A | 2025-10-01 17:00 A | 11 | 100% |  | 2025-09-30 08:00 | 2025-10-01 17:00 | 2d |  | Bùi Lê Thị Trúc Ly (Lead) | 16h | 16h | 6,400,000 | 6,400,000 | 6,400,000 |
| 20 | 1.3.4 | **3.4 Thiết kế giao diện** |  | 4d | 2025-10-01 08:00 A | 2025-10-06 17:00 A |  | 100% |  | 2025-10-01 08:00 | 2025-10-06 17:00 | 4d |  |  | 32h | 32h | 7,040,000 | 7,040,000 | 7,040,000 |
| 21 | 1.3.4.1 | 3.4.1. Giao diện trang chủ |  | 4h | 2025-10-01 08:00 A | 2025-10-01 12:00 A | 18 | 100% |  | 2025-10-01 08:00 | 2025-10-01 12:00 | 4h |  | Bùi Tấn Tài (Design) | 4h | 4h | 880,000 | 880,000 | 880,000 |
| 22 | 1.3.4.2 | 3.4.2. GD đăng nhập |  | 2h | 2025-10-01 13:00 A | 2025-10-01 15:00 A | 21 | 100% |  | 2025-10-01 13:00 | 2025-10-01 15:00 | 2h |  | Bùi Tấn Tài (Design) | 2h | 2h | 440,000 | 440,000 | 440,000 |
| 23 | 1.3.4.3 | 3.4.3. GD đăng ký |  | 2h | 2025-10-01 15:00 A | 2025-10-01 17:00 A | 22 | 100% |  | 2025-10-01 15:00 | 2025-10-01 17:00 | 2h |  | Bùi Tấn Tài (Design) | 2h | 2h | 440,000 | 440,000 | 440,000 |
| 24 | 1.3.4.4 | 3.4.4. GD Giỏ hàng |  | 2h | 2025-10-02 08:00 A | 2025-10-02 10:00 A | 23 | 100% |  | 2025-10-02 08:00 | 2025-10-02 10:00 | 2h |  | Bùi Tấn Tài (Design) | 2h | 2h | 440,000 | 440,000 | 440,000 |
| 25 | 1.3.4.5 | 3.4.5. GD sản phẩm |  | 2h | 2025-10-02 10:00 A | 2025-10-02 12:00 A | 24 | 100% |  | 2025-10-02 10:00 | 2025-10-02 12:00 | 2h |  | Bùi Tấn Tài (Design) | 2h | 2h | 440,000 | 440,000 | 440,000 |
| 26 | 1.3.4.6 | 3.4.6. GD chi tiết sản phẩm |  | 2h | 2025-10-02 13:00 A | 2025-10-02 15:00 A | 25 | 100% |  | 2025-10-02 13:00 | 2025-10-02 15:00 | 2h |  | Bùi Tấn Tài (Design) | 2h | 2h | 440,000 | 440,000 | 440,000 |
| 27 | 1.3.4.7 | 3.4.7. GD thông báo kết quả thanh toán |  | 2h | 2025-10-02 15:00 A | 2025-10-02 17:00 A | 26 | 100% |  | 2025-10-02 15:00 | 2025-10-02 17:00 | 2h |  | Bùi Tấn Tài (Design) | 2h | 2h | 440,000 | 440,000 | 440,000 |
| 28 | 1.3.4.8 | 3.4.8. GD đặt hàng |  | 2h | 2025-10-03 08:00 A | 2025-10-03 10:00 A | 27 | 100% |  | 2025-10-03 08:00 | 2025-10-03 10:00 | 2h |  | Bùi Tấn Tài (Design) | 2h | 2h | 440,000 | 440,000 | 440,000 |
| 29 | 1.3.4.9 | 3.4.9. GD quản trị hệ thống |  | 5h | 2025-10-03 10:00 A | 2025-10-03 16:00 A | 28 | 100% |  | 2025-10-03 10:00 | 2025-10-03 16:00 | 5h |  | Bùi Tấn Tài (Design) | 5h | 5h | 1,100,000 | 1,100,000 | 1,100,000 |
| 30 | 1.3.4.10 | 3.4.10. GD doanh mục sản phẩm |  | 2h | 2025-10-03 16:00 A | 2025-10-06 09:00 A | 29 | 100% |  | 2025-10-03 16:00 | 2025-10-06 09:00 | 2h |  | Bùi Tấn Tài (Design) | 2h | 2h | 440,000 | 440,000 | 440,000 |
| 31 | 1.3.4.11 | 3.4.11. GD quản lý người dùng |  | 5h | 2025-10-06 09:00 A | 2025-10-06 15:00 A | 30 | 100% |  | 2025-10-06 09:00 | 2025-10-06 15:00 | 5h |  | Bùi Tấn Tài (Design) | 5h | 5h | 1,100,000 | 1,100,000 | 1,100,000 |
| 32 | 1.3.4.12 | 3.4.12. GD thanh toán |  | 2h | 2025-10-06 15:00 A | 2025-10-06 17:00 A | 31 | 100% |  | 2025-10-06 15:00 | 2025-10-06 17:00 | 2h |  | Bùi Tấn Tài (Design) | 2h | 2h | 440,000 | 440,000 | 440,000 |
| 33 | 1.3.5 | Hoàn thành giai đoạn phân tích và thiết kế |  | 1d | 2025-10-07 08:00 A | 2025-10-07 17:00 A | 19, 18, 32 | 100% |  | 2025-10-07 08:00 | 2025-10-07 17:00 | 1d |  | Bùi Lê Thị Trúc Ly (Lead) | 8h | 8h | 3,200,000 | 3,200,000 | 3,200,000 |

| ID | WBS | Task | Duration | Start | Finish | Predecessors | Complete | Baseline start | Baseline finish | Baseline duration | Resources | Work | Actual work | Cost | Baseline cost | Actual cost |
| --- | --- | --- | --- | --- | --- | --- | --- | --- | --- | --- | --- | --- | --- | --- | --- | --- |
| 34 | 1.4 | **4. Coding** | 14d | 2025-10-08 08:00 A | 2025-10-27 17:00 A |  | 100% | 2025-10-08 08:00 | 2025-10-27 17:00 | 14d |  | 376h | 376h | 94,400,000 | 94,400,000 | 94,400,000 |
| 35 | 1.4.1 | **4.1. Code BE** | 13d | 2025-10-08 08:00 A | 2025-10-24 17:00 A |  | 100% | 2025-10-08 08:00 | 2025-10-24 17:00 | 13d |  | 200h | 200h | 52,080,000 | 52,080,000 | 52,080,000 |
| 36 | 1.4.1.1 | **4.1.1. User** | 13d | 2025-10-08 08:00 A | 2025-10-24 17:00 A |  | 100% | 2025-10-08 08:00 | 2025-10-24 17:00 | 13d |  | 104h | 104h | 28,080,000 | 28,080,000 | 28,080,000 |
| 37 | 1.4.1.1.1 | 4.1.1.1. API đăng nhập | 1d | 2025-10-08 08:00 A | 2025-10-08 17:00 A | 33 | 100% | 2025-10-08 08:00 | 2025-10-08 17:00 | 1d | Lê Hữu Lộc (BE1) | 8h | 8h | 2,160,000 | 2,160,000 | 2,160,000 |
| 38 | 1.4.1.1.2 | 4.1.1.2. API đăng ký | 1d | 2025-10-09 08:00 A | 2025-10-09 17:00 A | 37 | 100% | 2025-10-09 08:00 | 2025-10-09 17:00 | 1d | Lê Hữu Lộc (BE1) | 8h | 8h | 2,160,000 | 2,160,000 | 2,160,000 |
| 39 | 1.4.1.1.3 | 4.1.1.3. API tìm kiếm | 1d | 2025-10-10 08:00 A | 2025-10-10 17:00 A | 38 | 100% | 2025-10-10 08:00 | 2025-10-10 17:00 | 1d | Lê Hữu Lộc (BE1) | 8h | 8h | 2,160,000 | 2,160,000 | 2,160,000 |
| 40 | 1.4.1.1.4 | 4.1.1.4. API đặt hàng | 2d | 2025-10-13 08:00 A | 2025-10-14 17:00 A | 39 | 100% | 2025-10-13 08:00 | 2025-10-14 17:00 | 2d | Lê Hữu Lộc (BE1) | 16h | 16h | 4,320,000 | 4,320,000 | 4,320,000 |
| 41 | 1.4.1.1.5 | 4.1.1.5. API Xem chi tiết sản phẩm | 1d | 2025-10-15 08:00 A | 2025-10-15 17:00 A | 40 | 100% | 2025-10-15 08:00 | 2025-10-15 17:00 | 1d | Lê Hữu Lộc (BE1) | 8h | 8h | 2,160,000 | 2,160,000 | 2,160,000 |
| 42 | 1.4.1.1.6 | 4.1.1.6. API Thanh toán | 2d | 2025-10-16 08:00 A | 2025-10-17 17:00 A | 41 | 100% | 2025-10-16 08:00 | 2025-10-17 17:00 | 2d | Lê Hữu Lộc (BE1) | 16h | 16h | 4,320,000 | 4,320,000 | 4,320,000 |
| 43 | 1.4.1.1.7 | 4.1.1.7. API Quản lý Giỏ Hàng | 2d | 2025-10-20 08:00 A | 2025-10-21 17:00 A | 42 | 100% | 2025-10-20 08:00 | 2025-10-21 17:00 | 2d | Lê Hữu Lộc (BE1) | 16h | 16h | 4,320,000 | 4,320,000 | 4,320,000 |
| 44 | 1.4.1.1.8 | 4.1.1.8. API Đăng xuất | 1d | 2025-10-22 08:00 A | 2025-10-22 17:00 A | 43 | 100% | 2025-10-22 08:00 | 2025-10-22 17:00 | 1d | Lê Hữu Lộc (BE1) | 8h | 8h | 2,160,000 | 2,160,000 | 2,160,000 |
| 45 | 1.4.1.1.9 | 4.1.1.9. API Quản lý thông tin tài khoản | 2d | 2025-10-23 08:00 A | 2025-10-24 17:00 A | 44 | 100% | 2025-10-23 08:00 | 2025-10-24 17:00 | 2d | Lê Hữu Lộc (BE1) | 16h | 16h | 4,320,000 | 4,320,000 | 4,320,000 |
| 46 | 1.4.1.2 | **4.1.2 Admin** | 12d | 2025-10-08 08:00 A | 2025-10-23 17:00 A |  | 100% | 2025-10-08 08:00 | 2025-10-23 17:00 | 12d |  | 96h | 96h | 24,000,000 | 24,000,000 | 24,000,000 |
| 47 | 1.4.1.2.1 | 4.1.2.1. Quản lý tài khoản | 2d | 2025-10-08 08:00 A | 2025-10-09 17:00 A | 33 | 100% | 2025-10-08 08:00 | 2025-10-09 17:00 | 2d | Hoàng Lê Thanh Hải (BE 2) | 16h | 16h | 4,000,000 | 4,000,000 | 4,000,000 |
| 48 | 1.4.1.2.2 | 4.1.2.2. quản lý sản phẩm | 2d | 2025-10-10 08:00 A | 2025-10-13 17:00 A | 47 | 100% | 2025-10-10 08:00 | 2025-10-13 17:00 | 2d | Hoàng Lê Thanh Hải (BE 2) | 16h | 16h | 4,000,000 | 4,000,000 | 4,000,000 |
| 49 | 1.4.1.2.3 | 4.1.2.3. Quản lý đơn hàng | 2d | 2025-10-14 08:00 A | 2025-10-15 17:00 A | 48 | 100% | 2025-10-14 08:00 | 2025-10-15 17:00 | 2d | Hoàng Lê Thanh Hải (BE 2) | 16h | 16h | 4,000,000 | 4,000,000 | 4,000,000 |
| 50 | 1.4.1.2.4 | 4.1.2.4. Quản lý Doanh thu | 2d | 2025-10-16 08:00 A | 2025-10-17 17:00 A | 49 | 100% | 2025-10-16 08:00 | 2025-10-17 17:00 | 2d | Hoàng Lê Thanh Hải (BE 2) | 16h | 16h | 4,000,000 | 4,000,000 | 4,000,000 |
| 51 | 1.4.1.2.5 | 4.1.2.5. Quản lý Doanh mục sản phẩm | 2d | 2025-10-20 08:00 A | 2025-10-21 17:00 A | 50 | 100% | 2025-10-20 08:00 | 2025-10-21 17:00 | 2d | Hoàng Lê Thanh Hải (BE 2) | 16h | 16h | 4,000,000 | 4,000,000 | 4,000,000 |
| 52 | 1.4.1.2.6 | 4.1.2.6. Quản lý người dùng | 2d | 2025-10-22 08:00 A | 2025-10-23 17:00 A | 51 | 100% | 2025-10-22 08:00 | 2025-10-23 17:00 | 2d | Hoàng Lê Thanh Hải (BE 2) | 16h | 16h | 4,000,000 | 4,000,000 | 4,000,000 |
| 53 | 1.4.2 | **4.2. Code FE** | 12d | 2025-10-08 08:00 A | 2025-10-23 17:00 A |  | 100% | 2025-10-08 08:00 | 2025-10-23 17:00 | 12d |  | 168h | 168h | 39,120,000 | 39,120,000 | 39,120,000 |
| 54 | 1.4.2.1 | 4.2.1. Giao diện trang chủ | 2d | 2025-10-08 08:00 A | 2025-10-09 17:00 A | 33 | 100% | 2025-10-08 08:00 | 2025-10-09 17:00 | 2d | Bùi Thị Thu Hường (FE1) | 16h | 16h | 4,000,000 | 4,000,000 | 4,000,000 |
| 55 | 1.4.2.2 | 4.2.2. GD đăng nhập | 1d | 2025-10-10 08:00 A | 2025-10-10 17:00 A | 54 | 100% | 2025-10-10 08:00 | 2025-10-10 17:00 | 1d | Bùi Thị Thu Hường (FE1) | 8h | 8h | 2,000,000 | 2,000,000 | 2,000,000 |
| 56 | 1.4.2.3 | 4.2.3. GD đăng ký | 1d | 2025-10-13 08:00 A | 2025-10-13 17:00 A | 55 | 100% | 2025-10-13 08:00 | 2025-10-13 17:00 | 1d | Bùi Thị Thu Hường (FE1) | 8h | 8h | 2,000,000 | 2,000,000 | 2,000,000 |
| 57 | 1.4.2.4 | 4.2.4. GD Giỏ hàng | 2d | 2025-10-14 08:00 A | 2025-10-15 17:00 A | 56 | 100% | 2025-10-14 08:00 | 2025-10-15 17:00 | 2d | Bùi Thị Thu Hường (FE1) | 16h | 16h | 4,000,000 | 4,000,000 | 4,000,000 |
| 58 | 1.4.2.5 | 4.2.5. GD sản phẩm | 2d | 2025-10-16 08:00 A | 2025-10-17 17:00 A | 57 | 100% | 2025-10-16 08:00 | 2025-10-17 17:00 | 2d | Bùi Thị Thu Hường (FE1) | 16h | 16h | 4,000,000 | 4,000,000 | 4,000,000 |
| 59 | 1.4.2.6 | 4.2.6. GD chi tiết sản phẩm | 1d | 2025-10-20 08:00 A | 2025-10-20 17:00 A | 58 | 100% | 2025-10-20 08:00 | 2025-10-20 17:00 | 1d | Bùi Thị Thu Hường (FE1) | 8h | 8h | 2,000,000 | 2,000,000 | 2,000,000 |
| 60 | 1.4.2.7 | 4.2.7. GD đặt hàng | 2d | 2025-10-08 08:00 A | 2025-10-09 17:00 A | 33 | 100% | 2025-10-08 08:00 | 2025-10-09 17:00 | 2d | Nguyễn Thanh Phú (FE2) | 16h | 16h | 3,520,000 | 3,520,000 | 3,520,000 |
| 61 | 1.4.2.8 | 4.2.8. GD thông báo kết quả thanh toán | 12h | 2025-10-10 08:00 A | 2025-10-13 12:00 A | 60 | 100% | 2025-10-10 08:00 | 2025-10-13 12:00 | 12h | Nguyễn Thanh Phú (FE2) | 12h | 12h | 2,640,000 | 2,640,000 | 2,640,000 |
| 62 | 1.4.2.9 | 4.2.9. GD quản trị hệ thống | 1d | 2025-10-13 13:00 A | 2025-10-14 12:00 A | 61 | 100% | 2025-10-13 13:00 | 2025-10-14 12:00 | 1d | Nguyễn Thanh Phú (FE2) | 8h | 8h | 1,760,000 | 1,760,000 | 1,760,000 |
| 63 | 1.4.2.10 | 4.2.10. GD doanh mục sản phẩm | 1d | 2025-10-14 13:00 A | 2025-10-15 12:00 A | 62 | 100% | 2025-10-14 13:00 | 2025-10-15 12:00 | 1d | Nguyễn Thanh Phú (FE2) | 8h | 8h | 1,760,000 | 1,760,000 | 1,760,000 |
| 64 | 1.4.2.11 | 4.2.11. GD quản lý người dùng | 2d | 2025-10-15 13:00 A | 2025-10-17 12:00 A | 63 | 100% | 2025-10-15 13:00 | 2025-10-17 12:00 | 2d | Nguyễn Thanh Phú (FE2) | 16h | 16h | 3,520,000 | 3,520,000 | 3,520,000 |
| 65 | 1.4.2.12 | 4.2.12. GD thanh toán | 3d | 2025-10-17 13:00 A | 2025-10-22 12:00 A | 64 | 100% | 2025-10-17 13:00 | 2025-10-22 12:00 | 3d | Nguyễn Thanh Phú (FE2) | 24h | 24h | 5,280,000 | 5,280,000 | 5,280,000 |
| 66 | 1.4.2.13 | 4.2.13. GD Tìm kiếm | 12h | 2025-10-22 13:00 A | 2025-10-23 17:00 A | 65 | 100% | 2025-10-22 13:00 | 2025-10-23 17:00 | 12h | Nguyễn Thanh Phú (FE2) | 12h | 12h | 2,640,000 | 2,640,000 | 2,640,000 |
| 67 | 1.4.3 | Hoàn thành giai đoạn coding | 1d | 2025-10-27 08:00 A | 2025-10-27 17:00 A | 45, 52, 59, 66 | 100% | 2025-10-27 08:00 | 2025-10-27 17:00 | 1d | Bùi Lê Thị Trúc Ly (Lead) | 8h | 8h | 3,200,000 | 3,200,000 | 3,200,000 |

| ID | WBS | Task | Type | Duration | Start | Finish | Predecessors | Complete | Remaining | Baseline start | Baseline finish | Baseline duration | Total slack | Free slack | Resources | Work | Actual work | Cost | Baseline cost | Actual cost |
| --- | --- | --- | --- | --- | --- | --- | --- | --- | --- | --- | --- | --- | --- | --- | --- | --- | --- | --- | --- | --- |
| 68 | 1.5 | **5. Testing** |  | 24d | 2025-09-29 08:00 A | 2025-10-30 17:00 |  | 64% | 8.73d | 2025-09-29 08:00 | 2025-10-30 17:00 | 24d | 0d |  |  | 88h | 56h | 17,600,000 | 17,600,000 | 11,200,000 |
| 69 | 1.5.1 | 5.1 PlanTest |  | 1d | 2025-09-29 08:00 A | 2025-09-29 17:00 A | 9 | 100% |  | 2025-09-29 08:00 | 2025-09-29 17:00 | 1d |  |  | Nguyễn Tấn Mạnh (Test) | 8h | 8h | 1,600,000 | 1,600,000 | 1,600,000 |
| 70 | 1.5.2 | **5.2 Viết TC** |  | 6d | 2025-10-02 08:00 A | 2025-10-09 17:00 A |  | 100% |  | 2025-10-02 08:00 | 2025-10-09 17:00 | 6d |  |  |  | 48h | 48h | 9,600,000 | 9,600,000 | 9,600,000 |
| 71 | 1.5.2.1 | 5.2.1. Chức năng Đăng nhập |  | 5h | 2025-10-02 08:00 A | 2025-10-02 14:00 A | 19 | 100% |  | 2025-10-02 08:00 | 2025-10-02 14:00 | 5h |  |  | Nguyễn Tấn Mạnh (Test) | 5h | 5h | 1,000,000 | 1,000,000 | 1,000,000 |
| 72 | 1.5.2.2 | 5.2.2. Chức năng đăng ký |  | 5h | 2025-10-02 14:00 A | 2025-10-03 10:00 A | 71 | 100% |  | 2025-10-02 14:00 | 2025-10-03 10:00 | 5h |  |  | Nguyễn Tấn Mạnh (Test) | 5h | 5h | 1,000,000 | 1,000,000 | 1,000,000 |
| 73 | 1.5.2.3 | 5.2.3. Chức năng đăng xuất |  | 2h | 2025-10-03 10:00 A | 2025-10-03 12:00 A | 72 | 100% |  | 2025-10-03 10:00 | 2025-10-03 12:00 | 2h |  |  | Nguyễn Tấn Mạnh (Test) | 2h | 2h | 400,000 | 400,000 | 400,000 |
| 74 | 1.5.2.4 | 5.2.4. Chức năng tạo đơn hàng |  | 6h | 2025-10-03 13:00 A | 2025-10-06 10:00 A | 73 | 100% |  | 2025-10-03 13:00 | 2025-10-06 10:00 | 6h |  |  | Nguyễn Tấn Mạnh (Test) | 6h | 6h | 1,200,000 | 1,200,000 | 1,200,000 |
| 75 | 1.5.2.5 | 5.2.5. Chức năng thanh toán |  | 10h | 2025-10-06 10:00 A | 2025-10-07 12:00 A | 74 | 100% |  | 2025-10-06 10:00 | 2025-10-07 12:00 | 10h |  |  | Nguyễn Tấn Mạnh (Test) | 10h | 10h | 2,000,000 | 2,000,000 | 2,000,000 |
| 76 | 1.5.2.6 | 5.2.6. Quản lý giỏ hàng |  | 10h | 2025-10-07 13:00 A | 2025-10-08 15:00 A | 75 | 100% |  | 2025-10-07 13:00 | 2025-10-08 15:00 | 10h |  |  | Nguyễn Tấn Mạnh (Test) | 10h | 10h | 2,000,000 | 2,000,000 | 2,000,000 |
| 77 | 1.5.2.7 | 5.2.7. Chức năng quản lý |  | 8h | 2025-10-08 15:00 A | 2025-10-09 15:00 A | 76 | 100% |  | 2025-10-08 15:00 | 2025-10-09 15:00 | 8h |  |  | Nguyễn Tấn Mạnh (Test) | 8h | 8h | 1,600,000 | 1,600,000 | 1,600,000 |
| 78 | 1.5.2.8 | 5.2.8. Xem chi tiết sản phẩm |  | 2h | 2025-10-09 15:00 A | 2025-10-09 17:00 A | 77 | 100% |  | 2025-10-09 15:00 | 2025-10-09 17:00 | 2h |  |  | Nguyễn Tấn Mạnh (Test) | 2h | 2h | 400,000 | 400,000 | 400,000 |
| 79 | 1.5.3 | **5.3 Chuẩn bị data và môi trường test** |  | 1d | 2025-10-10 08:00 | 2025-10-10 17:00 |  |  |  | 2025-10-10 08:00 | 2025-10-10 17:00 | 1d | 11d |  |  | 8h |  | 1,600,000 | 1,600,000 |  |
| 80 | 1.5.3.1 | 5.3.1. Data test |  | 3h | 2025-10-10 08:00 | 2025-10-10 11:00 | 78 |  |  | 2025-10-10 08:00 | 2025-10-10 11:00 | 3h | 11d | 0d | Nguyễn Tấn Mạnh (Test) | 3h |  | 600,000 | 600,000 |  |
| 81 | 1.5.3.2 | 5.3.2. Setup môi trường test |  | 5h | 2025-10-10 11:00 | 2025-10-10 17:00 | 80 |  |  | 2025-10-10 11:00 | 2025-10-10 17:00 | 5h | 11d |  | Nguyễn Tấn Mạnh (Test) | 5h |  | 1,000,000 | 1,000,000 |  |
| 82 | 1.5.4 | **5.4 Run test** |  | 3d | 2025-10-28 08:00 | 2025-10-30 17:00 |  |  |  | 2025-10-28 08:00 | 2025-10-30 17:00 | 3d | 0d |  |  | 24h |  | 4,800,000 | 4,800,000 |  |
| 83 | 1.5.4.1 | 5.4.1. Chức năng Đăng nhập |  | 3h | 2025-10-28 08:00 | 2025-10-28 11:00 | 67, 81 |  |  | 2025-10-28 08:00 | 2025-10-28 11:00 | 3h | 0d |  | Nguyễn Tấn Mạnh (Test) | 3h |  | 600,000 | 600,000 |  |
| 84 | 1.5.4.2 | 5.4.2. Chức năng đăng ký |  | 3h | 2025-10-28 11:00 | 2025-10-28 15:00 | 83 |  |  | 2025-10-28 11:00 | 2025-10-28 15:00 | 3h | 0d |  | Nguyễn Tấn Mạnh (Test) | 3h |  | 600,000 | 600,000 |  |
| 85 | 1.5.4.3 | 5.4.3. Chức năng đăng xuất |  | 1h | 2025-10-28 15:00 | 2025-10-28 16:00 | 84 |  |  | 2025-10-28 15:00 | 2025-10-28 16:00 | 1h | 0d |  | Nguyễn Tấn Mạnh (Test) | 1h |  | 200,000 | 200,000 |  |
| 86 | 1.5.4.4 | 5.4.4. Chức năng tạo đơn hàng |  | 4h | 2025-10-28 16:00 | 2025-10-29 11:00 | 85 |  |  | 2025-10-28 16:00 | 2025-10-29 11:00 | 4h | 0d |  | Nguyễn Tấn Mạnh (Test) | 4h |  | 800,000 | 800,000 |  |
| 87 | 1.5.4.5 | 5.4.5. Chức năng thanh toán |  | 4h | 2025-10-29 11:00 | 2025-10-29 16:00 | 86 |  |  | 2025-10-29 11:00 | 2025-10-29 16:00 | 4h | 0d |  | Nguyễn Tấn Mạnh (Test) | 4h |  | 800,000 | 800,000 |  |
| 88 | 1.5.4.6 | 5.4.6. Quản lý giỏ hàng |  | 3h | 2025-10-29 16:00 | 2025-10-30 10:00 | 87 |  |  | 2025-10-29 16:00 | 2025-10-30 10:00 | 3h | 0d |  | Nguyễn Tấn Mạnh (Test) | 3h |  | 600,000 | 600,000 |  |
| 89 | 1.5.4.7 | 5.4.7. Chức năng quản lý |  | 3h | 2025-10-30 10:00 | 2025-10-30 14:00 | 88 |  |  | 2025-10-30 10:00 | 2025-10-30 14:00 | 3h | 0d |  | Nguyễn Tấn Mạnh (Test) | 3h |  | 600,000 | 600,000 |  |
| 90 | 1.5.4.8 | 5.4.8. Xem chi tiết sản phẩm |  | 3h | 2025-10-30 14:00 | 2025-10-30 17:00 | 89 |  |  | 2025-10-30 14:00 | 2025-10-30 17:00 | 3h | 0d |  | Nguyễn Tấn Mạnh (Test) | 3h |  | 600,000 | 600,000 |  |
| 91 | 1.5.5 | Hoàn thành giai đoạn Test | milestone | 0d | 2025-10-30 17:00 | 2025-10-30 17:00 | 90 |  |  | 2025-10-30 17:00 | 2025-10-30 17:00 | 0d | 0d |  | Nguyễn Tấn Mạnh (Test) |  |  |  |  |  |

| ID | WBS | Task | Type | Duration | Start | Finish | Predecessors | Baseline start | Baseline finish | Baseline duration | Total slack | Resources | Work | Cost | Baseline cost |
| --- | --- | --- | --- | --- | --- | --- | --- | --- | --- | --- | --- | --- | --- | --- | --- |
| 92 | 1.6 | **6. Fix và Retest** |  | 8d | 2025-10-31 08:00 | 2025-11-11 17:00 |  | 2025-10-31 08:00 | 2025-11-11 17:00 | 8d | 0d |  | 64h | 15,600,000 | 15,600,000 |
| 93 | 1.6.1 | 6.1. Fix |  | 5d | 2025-10-31 08:00 | 2025-11-06 17:00 | 91 | 2025-10-31 08:00 | 2025-11-06 17:00 | 5d | 0d | Lê Hữu Lộc (BE1) | 40h | 10,800,000 | 10,800,000 |
| 94 | 1.6.2 | 6.2. Retest |  | 3d | 2025-11-07 08:00 | 2025-11-11 17:00 | 93 | 2025-11-07 08:00 | 2025-11-11 17:00 | 3d | 0d | Nguyễn Tấn Mạnh (Test) | 24h | 4,800,000 | 4,800,000 |
| 95 | 1.6.3 | Hoàn thành giai đoạn fix và Retest | milestone | 0d | 2025-11-11 17:00 | 2025-11-11 17:00 | 94, 67 | 2025-11-11 17:00 | 2025-11-11 17:00 | 0d | 0d | Bùi Lê Thị Trúc Ly (Lead) |  |  |  |
| 96 | 1.7 | **7. Deploy sản phẩm và viết tài liệu** |  | 5d | 2025-11-12 08:00 | 2025-11-18 17:00 |  | 2025-11-12 08:00 | 2025-11-18 17:00 | 5d | 0d |  | 40h | 16,000,000 | 16,000,000 |
| 97 | 1.7.1 | 7.1. Deploy |  | 1d | 2025-11-12 08:00 | 2025-11-12 17:00 | 95 | 2025-11-12 08:00 | 2025-11-12 17:00 | 1d | 0d | Bùi Lê Thị Trúc Ly (Lead) | 8h | 3,200,000 | 3,200,000 |
| 98 | 1.7.2 | 7.2. Viết tài liệu hướng dẫn |  | 4d | 2025-11-13 08:00 | 2025-11-18 17:00 | 97 | 2025-11-13 08:00 | 2025-11-18 17:00 | 4d | 0d | Bùi Lê Thị Trúc Ly (Lead) | 32h | 12,800,000 | 12,800,000 |
| 99 | 1.7.3 | Hoàn thành giai đoạn Deploy và viết tài liệu | milestone | 0d | 2025-11-18 17:00 | 2025-11-18 17:00 | 97, 98 | 2025-11-18 17:00 | 2025-11-18 17:00 | 0d | 0d | Bùi Lê Thị Trúc Ly (Lead) |  |  |  |
| 100 | 1.8 | 8.Kết thúc | milestone | 0d | 2025-11-18 17:00 | 2025-11-18 17:00 | 99 | 2025-11-18 17:00 | 2025-11-18 17:00 | 0d | 0d | Bùi Lê Thị Trúc Ly (Lead) |  |  |  |
